# Plan de proyecto

Schedule from MS Project, 2018-10-22 to 2018-11-21, status date 2018-10-25, costs in $, A marks actual dates.

## Calendars

- Estándar: Mon-Fri 09:00-13:00, 15:00-19:00; Sat-Sun off. Exceptions (off unless hours are given): 2018-11-03 09:00-13:00, 15:00-19:00.

## Resources

| Resource | Group | Rate |
| --- | --- | --- |
| Juan Carlos Domínguez Domínguez | 3 | 30 |
| Alberto Hernández Gómez | 3 | 30 |
| Kevín Yaír Hernández Macías | 3 | 30 |
| Carlos Alberto Onorio Torres | 3 | 30 |

## Schedule

| ID | WBS | Task | Duration | Start | Finish | Predecessors | Complete | Remaining | Baseline start | Baseline finish | Baseline duration | Total slack | Free slack | Constraint | Resources | Work | Actual work | Cost | Baseline cost | Actual cost |
| --- | --- | --- | --- | --- | --- | --- | --- | --- | --- | --- | --- | --- | --- | --- | --- | --- | --- | --- | --- | --- |
| 1 | 1 | **Aplicación para la Movilidad en el Transporte Público Urbano** | 24d | 2018-10-22 A | 2018-11-21 |  | 17% | 19.89d | 2018-10-22 | 2018-11-21 | 23d | 0d |  |  |  | 512h | 48h | 15,360 | 17,520 | 1,440 |
| 2 | 1.1 | **Definición de artefactos** | 10d | 2018-10-22 A | 2018-11-02 |  | 55% | 4.55d | 2018-10-22 | 2018-11-01 | 9d | 14d |  |  |  | 88h | 48h | 2,640 | 2,880 | 1,440 |
| 3 | 1.1.1 | Solicitud de desarrollo de software | 1d | 2018-10-22 A | 2018-10-22 A |  | 100% |  | 2018-10-22 | 2018-10-22 | 1d |  |  | start no earlier than 2018-10-22 | Carlos Alberto Onorio Torres | 8h | 8h | 240 | 240 | 240 |
| 4 | 1.1.2 | Análisis de factibilidad | 2d | 2018-10-23 A | 2018-10-24 A | 3 | 100% |  | 2018-10-23 | 2018-10-24 | 2d |  |  |  | Alberto Hernández Gómez | 16h | 16h | 480 | 480 | 480 |
| 5 | 1.1.3 | Plan de gestión de riesgos | 3d | 2018-10-25 A | 2018-10-29 | 4 | 67% | 1d | 2018-10-25 | 2018-10-26 | 2d | 1d | 0d |  | Kevín Yaír Hernández Macías | 24h | 16h | 720 | 480 | 480 |
| 6 | 1.1.4 | Plan de medición | 2d | 2018-10-30 A | 2018-10-31 | 5 | 50% | 1d | 2018-10-29 | 2018-10-31 | 3d | 16d |  | finish no earlier than 2018-10-31 | Juan Carlos Domínguez Domínguez | 16h | 8h | 480 | 720 | 240 |
| 7 | 1.1.5 | Plan de calidad | 2d | 2018-11-01 | 2018-11-02 |  |  |  | 2018-10-29 | 2018-10-31 | 3d | 14d |  | start no earlier than 2018-11-01 | Carlos Alberto Onorio Torres | 16h |  | 480 | 720 |  |
| 8 | 1.1.6 | Plan de administración y control de cambio | 1d | 2018-11-02 | 2018-11-02 |  |  |  | 2018-11-01 | 2018-11-01 | 1d | 14d |  | finish no earlier than 2018-11-02 | Carlos Alberto Onorio Torres | 8h |  | 240 | 240 |  |
| 9 | 1.2 | **Requerimientos** | 7d | 2018-11-03 | 2018-11-12 |  |  |  | 2018-11-01 | 2018-11-12 | 8d | 7d |  |  |  | 280h |  | 8,400 | 10,320 |  |
| 10 | 1.2.1 | Resultado de análisis documental | 1d | 2018-11-03 | 2018-11-04 |  |  |  | 2018-11-01 | 2018-11-02 | 2d | 8d | 0d | finish no earlier than 2018-11-04 | Alberto Hernández Gómez; Carlos Alberto Onorio Torres; Juan Carlos Domínguez Domínguez; Kevín Yaír Hernández Macías | 32h |  | 960 | 1,920 |  |
| 11 | 1.2.2 | Prototipo no funcional | 1d | 2018-11-03 | 2018-11-04 |  |  |  | 2018-11-01 | 2018-11-02 | 2d | 8d | 0d | finish no earlier than 2018-11-04 | Alberto Hernández Gómez; Carlos Alberto Onorio Torres; Juan Carlos Domínguez Domínguez; Kevín Yaír Hernández Macías | 32h |  | 960 | 1,920 |  |
| 12 | 1.2.3 | Diagrama de casos de uso | 1d | 2018-11-05 | 2018-11-05 | 10, 11 |  |  | 2018-11-05 | 2018-11-05 | 1d | 12d |  |  | Alberto Hernández Gómez | 8h |  | 240 | 240 |  |
| 13 | 1.2.4 | Descripción de casos de uso | 3d | 2018-11-05 | 2018-11-07 | 10, 11 |  |  | 2018-11-05 | 2018-11-07 | 3d | 8d | 0d |  | Alberto Hernández Gómez; Carlos Alberto Onorio Torres; Juan Carlos Domínguez Domínguez; Kevín Yaír Hernández Macías | 96h |  | 2,880 | 2,880 |  |
| 14 | 1.2.5 | Especificación de requerimientos | 2d | 2018-11-08 | 2018-11-09 | 13 |  |  | 2018-11-08 | 2018-11-09 | 2d | 8d |  |  | Alberto Hernández Gómez | 16h |  | 480 | 480 |  |
| 15 | 1.2.6 | **Evaluación de requerimientos** | 2d | 2018-11-08 | 2018-11-09 | 13, 16 |  |  | 2018-11-08 | 2018-11-09 | 2d | 8d |  |  | Alberto Hernández Gómez; Carlos Alberto Onorio Torres; Juan Carlos Domínguez Domínguez; Kevín Yaír Hernández Macías | 80h |  | 2,400 | 2,400 |  |
| 16 | 1.2.6.1 | Checklist de requerimientos | 1d | 2018-11-08 | 2018-11-08 |  |  |  | 2018-11-08 | 2018-11-08 | 1d | 8d | 0d | start no earlier than 2018-11-07 | Carlos Alberto Onorio Torres | 8h |  | 240 | 240 |  |
| 17 | 1.2.6.2 | Reporte de aplicación del checklist de requerimientos | 1d | 2018-11-09 | 2018-11-09 | 16 |  |  | 2018-11-09 | 2018-11-09 | 1d | 8d |  |  | Alberto Hernández Gómez | 8h |  | 240 | 240 |  |
| 18 | 1.2.7 | Estimación de esfuerzo TCPU | 2d | 2018-11-09 | 2018-11-12 | 13 |  |  | 2018-11-09 | 2018-11-12 | 2d | 7d |  | start no earlier than 2018-11-09 | Juan Carlos Domínguez Domínguez | 16h |  | 480 | 480 |  |
| 19 | 1.3 | **Análisis/Diseño** | 6d | 2018-11-12 | 2018-11-19 |  |  |  | 2018-11-12 | 2018-11-19 | 6d | 2d |  |  |  | 104h |  | 3,120 | 3,120 |  |
| 20 | 1.3.1 | Modelo de dominio | 2d | 2018-11-12 | 2018-11-13 |  |  |  | 2018-11-12 | 2018-11-13 | 2d | 3d | 0d | start no earlier than 2018-11-12 | Carlos Alberto Onorio Torres | 16h |  | 480 | 480 |  |
| 21 | 1.3.2 | Diagrama de robustez | 1d | 2018-11-14 | 2018-11-14 | 20 |  |  | 2018-11-14 | 2018-11-14 | 1d | 3d | 0d |  | Alberto Hernández Gómez | 8h |  | 240 | 240 |  |
| 22 | 1.3.3 | Modelo de dominio actualizado | 1d | 2018-11-14 | 2018-11-14 | 20 |  |  | 2018-11-14 | 2018-11-14 | 1d | 3d | 0d | start no earlier than 2018-11-14 | Kevín Yaír Hernández Macías | 8h |  | 240 | 240 |  |
| 23 | 1.3.4 | Diagrama de secuencia | 2d | 2018-11-15 | 2018-11-16 | 21 |  |  | 2018-11-15 | 2018-11-16 | 2d | 3d |  |  | Juan Carlos Domínguez Domínguez | 16h |  | 480 | 480 |  |
| 24 | 1.3.5 | Diagrama de clases | 2d | 2018-11-15 | 2018-11-16 | 22 |  |  | 2018-11-15 | 2018-11-16 | 2d | 3d |  |  | Alberto Hernández Gómez | 16h |  | 480 | 480 |  |

| ID | WBS | Task | Duration | Start | Finish | Predecessors | Baseline start | Baseline finish | Baseline duration | Total slack | Free slack | Constraint | Resources | Work | Cost | Baseline cost |
| --- | --- | --- | --- | --- | --- | --- | --- | --- | --- | --- | --- | --- | --- | --- | --- | --- |
| 25 | 1.3.6 | **Evaluación de diseño** | 2d | 2018-11-16 | 2018-11-19 |  | 2018-11-16 | 2018-11-19 | 2d | 2d |  |  |  | 40h | 1,200 | 1,200 |
| 26 | 1.3.6.1 | Checklist de diseño | 1d | 2018-11-16 | 2018-11-16 |  | 2018-11-16 | 2018-11-16 | 1d | 2d | 0d | start no earlier than 2018-11-16 | Carlos Alberto Onorio Torres | 8h | 240 | 240 |
| 27 | 1.3.6.2 | Reporte de aplicación del checklist de diseño | 1d | 2018-11-19 | 2018-11-19 | 26 | 2018-11-19 | 2018-11-19 | 1d | 2d |  |  | Alberto Hernández Gómez; Carlos Alberto Onorio Torres; Juan Carlos Domínguez Domínguez; Kevín Yaír Hernández Macías | 32h | 960 | 960 |
| 28 | 1.4 | **Cierre** | 2d | 2018-11-20 | 2018-11-21 |  | 2018-11-20 | 2018-11-21 | 2d | 0d |  |  |  | 40h | 1,200 | 1,200 |
| 29 | 1.4.1 | Portafolio de proyecto | 1d | 2018-11-20 | 2018-11-20 |  | 2018-11-20 | 2018-11-20 | 1d | 0d |  | start no earlier than 2018-11-20 | Kevín Yaír Hernández Macías | 8h | 240 | 240 |
| 30 | 1.4.2 | Presentación de proyecto | 1d | 2018-11-21 | 2018-11-21 | 29 | 2018-11-21 | 2018-11-21 | 1d | 0d |  |  | Alberto Hernández Gómez; Carlos Alberto Onorio Torres; Juan Carlos Domínguez Domínguez; Kevín Yaír Hernández Macías | 32h | 960 | 960 |
